# Sistema Informático

Schedule from MS Project, 2016-03-01 to 2016-05-27, costs in S/..
Toshiba

## Calendars

- Sistema Informático: Mon-Sat 09:00-13:00, 15:00-19:00; Sun off. Exceptions (off unless hours are given): 2016-03-24 to 2016-03-26 (Semana Santa).

## Resources

| Resource | Rate |
| --- | --- |
| Ingeniero de Sistemas | 50 |
| Analista | 40 |
| Programador Senior | 40 |
| Programador Junior | 30 |
| Operador | 25 |
| Digitador | 20 |
| Asistente | 20 |

## Schedule

| ID | WBS | Task | Type | Duration | Start | Finish | Predecessors | Total slack | Free slack | Resources | Work | Cost |
| --- | --- | --- | --- | --- | --- | --- | --- | --- | --- | --- | --- | --- |
| 1 | 1 | **Estudios Preliminares** |  | 11d | 2016-03-01 | 2016-03-12 |  | 0d |  |  | 120h | 5,280 |
| 2 | 1.1 | Inicio de Estudios | milestone | 0d | 2016-03-01 | 2016-03-01 |  | 0d |  |  |  |  |
| 3 | 1.2 | Estrevista a Usuarios |  | 5d | 2016-03-01 | 2016-03-05 | 2 | 0d |  | Analista | 40h | 1,600 |
| 4 | 1.3 | Estudio de Factibilidad |  | 4d | 2016-03-07 | 2016-03-10 | 3 | 0d |  | Ingeniero de Sistemas; Analista | 64h | 2,880 |
| 5 | 1.4 | Análisis Costo Beneficio |  | 2d | 2016-03-11 | 2016-03-12 | 4 | 0d |  | Ingeniero de Sistemas | 16h | 800 |
| 6 | 1.5 | Estudios concluidos | milestone | 0d | 2016-03-12 | 2016-03-12 | 5 | 0d |  |  |  |  |
| 7 | 2 | **Análisis del Sistema** |  | 9d | 2016-03-12 | 2016-03-23 |  | 0d |  |  | 88h | 3,040 |
| 8 | 2.1 | Inicio de Análisis | milestone | 0d | 2016-03-12 | 2016-03-12 | 6 | 0d |  |  |  |  |
| 9 | 2.2 | Casos de Uso |  | 4d | 2016-03-14 | 2016-03-17 | 8 | 0d |  | Analista | 32h | 1,280 |
| 10 | 2.3 | Modelamiento de Clases |  | 4d | 2016-03-18 | 2016-03-22 | 9 | 0d |  | Analista | 32h | 1,280 |
| 11 | 2.4 | Elaboración de Informes |  | 3d | 2016-03-21 | 2016-03-23 | 10FF+1d | 0d |  | Digitador | 24h | 480 |
| 12 | 2.5 | Análisis Concluido | milestone | 0d | 2016-03-23 | 2016-03-23 | 11 | 0d |  |  |  |  |
| 13 | 3 | **Diseño del sistema** |  | 13d | 2016-03-23 | 2016-04-11 |  | 0d |  |  | 232h | 9,760 |
| 14 | 3.1 | Inicio de Diseño | milestone | 0d | 2016-03-23 | 2016-03-23 | 12 | 0d |  |  |  |  |
| 15 | 3.2 | Modelamiento de la BD |  | 6d | 2016-03-28 | 2016-04-02 | 14 | 0d |  | Ingeniero de Sistemas; Programador Senior | 96h | 4,320 |
| 16 | 3.3 | Requerimientos del Usuarios |  | 3d | 2016-03-28 | 2016-03-30 | 15SS | 3d |  | Analista | 24h | 960 |
| 17 | 3.4 | Diseño de Entradas |  | 4d | 2016-04-04 | 2016-04-07 | 15, 16 | 0d |  | Analista; Programador Senior | 64h | 2,560 |
| 18 | 3.5 | Diseño de Salidas |  | 3d | 2016-04-08 | 2016-04-11 | 17 | 0d |  | Analista; Programador Senior | 48h | 1,920 |
| 19 | 3.6 | Diseño Concluido | milestone | 0d | 2016-04-11 | 2016-04-11 | 18 | 0d |  |  |  |  |
| 20 | 4 | **Programación** |  | 20d | 2016-04-11 | 2016-05-04 |  | 0d |  |  | 240h | 8,800 |
| 21 | 4.1 | Inicio de Programación | milestone | 0d | 2016-04-11 | 2016-04-11 | 19 | 0d |  |  |  |  |
| 22 | 4.2 | Procesos de Negocio |  | 20d | 2016-04-12 | 2016-05-04 | 21 | 0d |  | Programador Senior | 160h | 6,400 |
| 23 | 4.3 | Mantenimiento de Tablas |  | 6d | 2016-04-12 | 2016-04-18 | 22SS | 10d | 0d | Programador Junior | 48h | 1,440 |
| 24 | 4.4 | Reportes y consultas |  | 4d | 2016-04-19 | 2016-04-22 | 23 | 10d |  | Programador Junior | 32h | 960 |
| 25 | 4.5 | Programación Concluida | milestone | 0d | 2016-05-04 | 2016-05-04 | 24, 22 | 0d |  |  |  |  |

| ID | WBS | Task | Type | Duration | Start | Finish | Predecessors | Total slack | Resources | Work | Cost |
| --- | --- | --- | --- | --- | --- | --- | --- | --- | --- | --- | --- |
| 26 | 5 | **Pruebas del Sistema** |  | 16d | 2016-04-30 | 2016-05-18 |  | 0d |  | 256h | 7,200 |
| 27 | 5.1 | Inicio de Prueba | milestone | 0d | 2016-04-30 | 2016-04-30 | 25FS-4d | 0d |  |  |  |
| 28 | 5.2 | Pruebas Modulares |  | 5d | 2016-04-30 | 2016-05-05 | 27 | 0d | Programador Junior; Operador | 80h | 2,200 |
| 29 | 5.3 | Pruebas Integrales |  | 3d | 2016-05-06 | 2016-05-09 | 28 | 0d | Operador; Programador Junior | 48h | 1,320 |
| 30 | 5.4 | Correcciones |  | 4d | 2016-05-07 | 2016-05-11 | 29FS-2d | 0d | Programador Senior | 32h | 1,280 |
| 31 | 5.5 | Elaboración de Manuales |  | 6d | 2016-05-12 | 2016-05-18 | 30 | 0d | Digitador; Programador Junior | 96h | 2,400 |
| 32 | 5.6 | Pruebas Realizadas | milestone | 0d | 2016-05-18 | 2016-05-18 | 31 | 0d |  |  |  |
| 33 | 6 | **Puesta en Marcha** |  | 8d | 2016-05-18 | 2016-05-27 |  | 0d |  | 144h | 6,080 |
| 34 | 6.1 | Inicio de Puesta en Marcha | milestone | 0d | 2016-05-18 | 2016-05-18 | 32 | 0d |  |  |  |
| 35 | 6.2 | Instalación del Sistema |  | 2d | 2016-05-19 | 2016-05-20 | 34 | 0d | Asistente | 16h | 320 |
| 36 | 6.3 | Capacitación al Usuario |  | 8d | 2016-05-19 | 2016-05-27 | 35SS | 0d | Ingeniero de Sistemas; Programador Senior | 128h | 5,760 |
| 37 | 6.4 | Sistema Funcionando | milestone | 0d | 2016-05-27 | 2016-05-27 | 35, 36 | 0d |  |  |  |
